任务ID,WBS,阶段,工作流,工作包,类型,范围码,默认启用,R,A,工期工作日,前置任务ID,计划开始,计划完成,交付物,验收标准,关联评审,备注
1001,0.01.01,0 前置立项,战略与立项,机会点、目标客户及产品路标匹配,任务,BASE,1,产品经理,PDT负责人,5,,2026-11-09,2026-11-13,机会说明/路标关联,客户、价格带、上市窗口及机会假设可核验,,
1002,0.01.02,0 前置立项,战略与立项,Charter 任务书与概念阶段授权,评审,BASE,1,产品经理,IPMT,2,1001,2026-11-16,2026-11-17,批准的Charter/概念预算,明确PDT负责人、范围、投入上限及退出条件,Charter,
1003,1.01.01,1 概念,市场与商业,VOC、使用场景与痛点调研,任务,BASE,1,产品经理,PDT负责人,10,1002,2026-11-18,2026-12-01,VOC/场景清单,覆盖目标人群、佩戴场景及购买决策因素,,
1004,1.01.02,1 概念,市场与商业,竞品拆解与体验/价格基准,任务,BASE,1,产品经理,PDT负责人,8,1002,2026-11-18,2026-11-27,竞品矩阵,覆盖续航、屏幕、运动健康、连接及售后差异,,
1005,1.02.01,1 概念,产品定义,功能边界、健康/医疗宣称和目标市场初判,任务,BASE,1,法规认证,产品经理,5,1003,2026-12-02,2026-12-08,功能与市场适用矩阵,区分一般健康与诊疗用途，列明市场和监管路径待确认项,,
1006,1.02.02,1 概念,产品定义,产品包需求与初版 PRD,任务,BASE,1,产品经理,PDT负责人,8,"1003,1004,1005",2026-12-09,2026-12-18,PRD v0/产品包需求,覆盖产品、配件、App、云、包装、服务及可测目标,,
1007,1.03.01,1 概念,工业与结构,ID、人体工学与佩戴概念,任务,BASE,1,ID/UX,PDT负责人,10,"1003,1004",2026-12-02,2026-12-15,ID概念/佩戴模型,尺寸、重量、表带、人群适配和充电方式有候选方案,,
1008,1.04.01,1 概念,系统工程,SoC/OS/存储及平台复用评估,任务,BASE,1,系统架构,PDT负责人,8,1006,2026-12-21,2026-12-30,平台选型建议,确认SDK授权、内存余量、维护周期及平台限制,,
1009,1.05.01,1 概念,运动健康,PPG/IMU/温度等传感方案可行性,任务,BASE,1,算法,PDT负责人,7,1006,2026-12-21,2026-12-29,传感器/算法可行性报告,识别肤色、运动伪影、光路、佩戴和数据依赖,,
1010,1.06.01,1 概念,射频与天线,蓝牙天线与整机堆叠可行性,任务,BASE,1,RF,PDT负责人,7,"1006,1007",2026-12-21,2026-12-29,射频风险清单,金属表壳、人体遮挡及天线净空存在可实施方案,,
1011,1.07.01,1 概念,电源与电池,电池容量、功耗及热预算初估,任务,BASE,1,硬件,PDT负责人,7,"1008,1007",2026-12-31,2027-01-08,能量/热预算,按目标使用模型估算续航并保留设计余量,,
1012,1.08.01,1 概念,采购与供应链,关键料供应、交期与可替代性初评,任务,BASE,1,采购,PDT负责人,7,"1008,1009",2026-12-31,2027-01-08,关键料风险/询价,屏幕、SoC、传感器、电池等长交期和单一来源已识别,,
1013,1.01.03,1 概念,市场与商业,销量、ASP、BOM及损益敏感性分析,任务,BASE,1,财务,PDT负责人,6,"1006,1012",2027-01-11,2027-01-18,初版商业计划,收入成本、毛利、NRE、保修和敏感性假设有责任人,,
1014,1.09.01,1 概念,质量与可靠性,质量、可靠性及安全目标初稿,任务,BASE,1,QA,PDT负责人,5,"1006,1005",2026-12-21,2026-12-25,质量目标/重大风险,定义任务剖面、关键失效及试验策略待确认项,,
1015,1.10.01,1 概念,技术评审,TR1：需求与产品概念评审,评审,BASE,1,系统架构,技术评审组,0,"1006,1008,1011,1014",2027-01-11,2027-01-11,TR1纪要/问题清单,需求和概念技术可行，关键风险及验证计划明确,TR1,
1016,1.11.01,1 概念,投资决策,CDCP：概念投资决策,评审,BASE,1,PM,IPMT,0,"1015,1013,1010,1007",2027-01-19,2027-01-19,CDCP决议/计划阶段授权,商业机会成立，风险可承受，批准下一阶段投入,CDCP,
1017,2.01.01,2 计划,项目策划,PDT组建、角色授权与供应商接口,任务,BASE,1,PM,PDT负责人,3,1016,2027-01-19,2027-01-21,PDT/RACI/沟通机制,职能代表、决策权限及ODM/OEM边界确认,,
1018,2.02.01,2 计划,需求与系统,PRD基线、SRS与需求分解,任务,BASE,1,系统架构,产品经理,10,1016,2027-01-19,2027-02-01,PRD/SRS/需求追踪矩阵,功能、性能、边界、优先级、验收方式和责任人完整,,
1019,2.03.01,2 计划,工业与结构,交互架构、UI与无障碍方案,任务,BASE,1,ID/UX,PDT负责人,15,1018,2027-02-02,2027-02-22,UX规范/可交互原型,核心路径、异常提示、语言及可访问性经过评审,,
1020,2.03.02,2 计划,工业与结构,ID定案、CMF、表带及人体工学评审,任务,BASE,1,ID/UX,PDT负责人,12,"1018,1007",2027-02-02,2027-02-17,ID/CMF基线,装配、皮肤接触、佩戴舒适与外观验收方法确认,,
1021,2.03.03,2 计划,工业与结构,整机堆叠、光路与防水声学架构,任务,BASE,1,结构,PDT负责人,12,"1020,1008",2027-02-18,2027-03-05,堆叠/密封/声学方案,光窗、天线、麦克风、扬声器、泄压及维修路径协调,,
1022,2.02.02,2 计划,需求与系统,系统架构、接口与软硬件版本策略,任务,BASE,1,系统架构,PDT负责人,12,"1018,1008",2027-02-02,2027-02-17,架构/接口/版本基线,明确端、App、云、算法和硬件接口及兼容矩阵,,
1023,2.04.01,2 计划,功能选配,GNSS频段、定位场景与天线共存策划,任务,GNSS,1,RF,PDT负责人,5,"1022,1021",2027-03-08,2027-03-12,GNSS设计/验证范围,定义TTFF、轨迹、城市峡谷及运动场景目标,,
1024,2.04.02,2 计划,功能选配,NFC用途、密钥责任与生态接入策划,任务,NFC,0,系统架构,PDT负责人,8,1022,,,NFC用途与合作计划,门禁、公交或支付按选定用途界定，确认商务与安全边界,,
1025,2.04.03,2 计划,功能选配,LTE/eSIM频段、运营商及平台接入策划,任务,LTE,0,RF,PDT负责人,10,1022,,,蜂窝与运营商准入计划,明确地区频段、VoLTE/紧急功能适用性及外部依赖,,
1026,2.04.04,2 计划,功能选配,Wi-Fi频段、共存与场景策划,任务,WIFI,0,RF,PDT负责人,5,1022,,,Wi-Fi规格,频段、吞吐、功耗、共存和市场限制明确,,
1027,2.04.05,2 计划,功能选配,ECG电极、算法和用途边界策划,任务,ECG,0,算法,PDT负责人,8,"1018,1021",,,ECG规格与验证方案,确认电极接触、信号质量与健康/医疗用途边界,,
1028,2.05.01,2 计划,法规与认证,医疗用途分类、注册路径与专项项目计划,任务,MED,0,法规认证,PDT负责人,15,"1005,1018",,,分类意见/注册及临床专项计划,由法规负责人确认地区路径、QMS、证据、预算和真实周期,,此工作包只做路线策划；启用医疗功能后须另建经批准的详细注册/临床子计划，模板工期不代表审批周期
1029,2.06.01,2 计划,质量与可靠性,DVP&R与整机验证总体计划,任务,BASE,1,测试,QA,10,"1018,1022",2027-02-18,2027-03-03,DVP&R/样本与设备计划,需求到用例追踪，试验条件、样本量、判据和复测规则获批,,
1030,2.06.02,2 计划,质量与可靠性,DFMEA、可靠性任务剖面与安全风险分析,任务,BASE,1,QA,PDT负责人,8,"1018,1021",2027-03-08,2027-03-17,DFMEA/可靠性计划,覆盖进液、电池热、皮肤接触、跌落及误测危害,,
1031,2.05.02,2 计划,法规与认证,目标市场认证适用性、标准版本与送样计划,任务,BASE,1,法规认证,PDT负责人,8,"1005,1022",2027-02-18,2027-03-01,认证矩阵/报价/实验室计划,每项有适用性结论、法源、样机配置、责任人与周期,,
1032,2.07.01,2 计划,安全与隐私,威胁建模、数据地图及隐私需求,任务,BASE,1,安全隐私,PDT负责人,8,"1022,1005",2027-02-18,2027-03-01,威胁模型/数据与安全要求,覆盖配对、密钥、健康/位置数据、未成年人适用性及云边界,,
1033,2.08.01,2 计划,软件与平台,软件迭代、持续集成及配置管理计划,任务,BASE,1,固件,PDT负责人,5,1022,2027-02-18,2027-02-24,发布列车/CI/配置规则,统一需求、代码、硬件、算法、App和云版本标识,,
1034,2.09.01,2 计划,App与云,App/手机OS兼容与商店发布计划,任务,APP,1,App,PDT负责人,6,1022,2027-02-18,2027-02-25,App兼容矩阵/上架计划,目标iOS/Android版本、权限和商店政策复核计划明确,,
1035,2.09.02,2 计划,App与云,云容量、运维、数据驻留与第三方服务策划,任务,CLOUD,1,云端,PDT负责人,7,"1022,1032",2027-03-02,2027-03-10,云架构/SLA/成本预算,明确区域、备份、恢复、可观测性及供应商责任,,
1036,2.10.01,2 计划,制造与供应链,NPI、DFM/DFA/DFT及工厂能力策划,任务,BASE,1,NPI,PDT负责人,8,"1021,1022",2027-03-08,2027-03-17,制造方案/工装设备清单,产测、校准、气密和追溯方案具备可行性,,
1037,2.10.02,2 计划,制造与供应链,模具、工装及治具交期与投资策划,任务,BASE,1,结构,PDT负责人,6,"1021,1036",2027-03-18,2027-03-25,模具/治具计划与预算,识别T0/T1/T2、修模及备份节拍,,
1038,2.10.03,2 计划,制造与供应链,供应商定点、质量协议与备选料策略,任务,BASE,1,采购,PDT负责人,10,"1012,1031",2027-03-02,2027-03-15,AVL/供应商质量协议,关键规格、PCN/EOL、产能和交付责任确认,,
1039,2.01.02,2 计划,项目策划,最终商业计划、预算与目标成本分解,任务,BASE,1,财务,PDT负责人,6,"1013,1038,1037",2027-03-26,2027-04-02,商业计划/NRE/OPEX/目标BOM,假设更新，分阶段投资、量产成本及盈亏风险确认,,
1040,2.01.03,2 计划,项目策划,WBS、依赖、资源及风险基线编制,任务,BASE,1,PM,PDT负责人,6,"1017,1029,1036",2027-03-18,2027-03-25,批准候选计划/风险台账,责任到人、交付物明确，长交期和认证路径进入主计划,,
1041,2.11.01,2 计划,技术评审,TR2：产品规格与需求可验证性评审,评审,BASE,1,系统架构,技术评审组,0,"1018,1029,1031,1032",2027-03-04,2027-03-04,TR2纪要/SRS基线,产品规格完整、可测，未决要求具有关闭计划,TR2,
1042,2.11.02,2 计划,技术评审,TR3：总体方案与开发准备评审,评审,BASE,1,系统架构,技术评审组,0,"1041,1021,1022,1030",2027-03-18,2027-03-18,TR3纪要/架构基线,跨域接口、风险和制造验证方案确认,TR3,
1043,2.01.04,2 计划,项目策划,选配功能与端云计划汇总关闭,任务,BASE,1,PM,PDT负责人,3,"1025,1024,1027,1028",2027-03-08,2027-03-10,选配子计划/外部依赖清单,启用功能有独立里程碑与责任人；不适用项留裁剪依据,,
1044,2.01.05,2 计划,项目策划,平台、定位及App/云计划一致性检查,任务,BASE,1,PM,PDT负责人,2,"1023,1026,1034,1035",2027-03-15,2027-03-16,跨域计划一致性记录,选配与平台接口、资源、迭代节奏一致,,
1045,2.12.01,2 计划,投资决策,PDCP：计划投资决策与项目承诺,评审,BASE,1,PM,IPMT,0,"1042,1039,1040,1043",2027-04-05,2027-04-05,PDCP决议/项目合同/计划基线,范围、资源、进度、成本、质量和风险经授权承诺,PDCP,planextra2、ux、toolplan等也通过开发入口任务控制，评审资料须整体核验
1046,3.01.01,3 开发,开发统筹,开发基线发布与跨域启动,任务,BASE,1,PM,PDT负责人,2,"1045,1044,1019,1033",2027-04-05,2027-04-06,开发基线/迭代计划,各领域使用相同产品配置及接口版本,,
1047,3.02.01,3 开发,硬件与射频,原理图、电源时序及保护电路设计,任务,BASE,1,硬件,PDT负责人,15,1046,2027-04-07,2027-04-27,原理图/设计计算,完成接口、功耗、保护和关键器件降额评审,,
1048,3.02.02,3 开发,硬件与射频,蓝牙射频、天线及人体加载仿真,任务,BASE,1,RF,PDT负责人,15,"1046,1021",2027-04-07,2027-04-27,天线/RF设计,匹配、净空、共存与人体场景有设计依据,,
1049,3.02.03,3 开发,硬件与射频,PCB Layout、SI/PI/EMC及可制造性评审,任务,BASE,1,硬件,PDT负责人,15,"1047,1048",2027-04-28,2027-05-18,PCB/Gerber/评审记录,高速、射频、模拟地、充电回路和生产可测性检查通过,,
1050,3.03.01,3 开发,结构与模具,结构详设、密封、声学及表带快拆设计,任务,BASE,1,结构,PDT负责人,20,"1046,1021",2027-04-07,2027-05-04,3D/2D图纸/公差链,密封压缩量、公差、胶路、跌落和装配可控,,
1051,3.03.02,3 开发,结构与模具,PPG光学窗口、遮光与接触压力设计,任务,BASE,1,结构,PDT负责人,12,"1050,1009",2027-05-05,2027-05-20,光路/光学材料/接触方案,抑制串光、漏光，兼顾肤色与佩戴适应性,,
1052,3.03.03,3 开发,结构与模具,CMF、接触材料和供应商工艺验证,任务,BASE,1,ID/UX,PDT负责人,15,1050,2027-05-05,2027-05-25,CMF封样/材料规范,外观、汗液、腐蚀、涂层及皮肤接触风险可验证,,
1053,3.03.04,3 开发,结构与模具,模具开模、T0/T1与尺寸测量,任务,BASE,1,结构,PDT负责人,30,"1050,1037",2027-05-05,2027-06-15,T1样件/尺寸报告,关键尺寸与装配缺陷形成闭环计划,,开模作为PDCP后投入；提前开模应单独批准风险投资
1054,3.02.04,3 开发,硬件与射频,EVT物料、PCB制板与SMT准备,任务,BASE,1,采购,PDT负责人,15,"1049,1038",2027-05-19,2027-06-08,EVT齐套表/PCBA,关键物料追溯、替代料和焊接质量确认,,
1055,3.04.01,3 开发,固件与系统,BSP、驱动与板级Bring-up,任务,BASE,1,固件,PDT负责人,20,1054,2027-06-09,2027-07-06,驱动/Bring-up记录,显示、触控、传感器、存储、通信和电源基本工作,,
1056,3.04.02,3 开发,固件与系统,启动链、签名、密钥与工厂烧录架构实现,任务,BASE,1,固件,PDT负责人,15,"1046,1032",2027-04-07,2027-04-27,安全启动/密钥方案,调试权限、密钥注入和恢复路径经过评审,,
1057,3.04.03,3 开发,固件与系统,系统服务、UI、通知、表盘与基础应用,任务,BASE,1,固件,PDT负责人,30,"1046,1019",2027-04-07,2027-05-18,固件功能版本,基础用户路径、异常恢复及配置符合规格,,
1058,3.04.04,3 开发,固件与系统,蓝牙协议、连接、通话/音频按需实现,任务,BASE,1,固件,PDT负责人,20,1055,2027-07-07,2027-08-03,蓝牙/音频功能,配对、重连、权限、干扰与典型手机兼容可测试,,
1059,3.04.05,3 开发,固件与系统,低功耗、充电策略与热保护实现,任务,BASE,1,固件,PDT负责人,20,"1055,1011",2027-07-07,2027-08-03,功耗控制/充电策略,覆盖休眠、唤醒、边充边用、低电量及温度保护,,
1060,3.04.06,3 开发,固件与系统,OTA、差分/全量升级与失败恢复实现,任务,BASE,1,固件,PDT负责人,15,"1056,1057",2027-05-19,2027-06-08,OTA链路/恢复机制,升级签名、掉电保护、兼容性及回滚规则明确,,
1061,3.05.01,3 开发,运动健康,心率/血氧/睡眠/运动算法集成与版本管理,任务,BASE,1,算法,PDT负责人,25,"1046,1009",2027-04-07,2027-05-11,算法版本/接口/评估脚本,数据来源、算法版本、场景限制和可复现性明确,,
1062,3.05.02,3 开发,运动健康,算法验证数据、招募与授权准备,任务,BASE,1,算法,PDT负责人,20,"1046,1029,1032",2027-04-07,2027-05-04,人群与场景数据计划,覆盖肤色、年龄、佩戴、运动强度，数据取得合法授权,,
1063,3.06.01,3 开发,App与云,App绑定、设置、数据展示与账号功能开发,任务,APP,1,App,PDT负责人,35,"1046,1034",2027-04-07,2027-05-25,App Alpha,端到端数据语义、权限、离线、注销及错误提示可用,,
1064,3.06.02,3 开发,App与云,云服务、API、数据处理及可观测性开发,任务,CLOUD,1,云端,PDT负责人,30,"1046,1035",2027-04-07,2027-05-18,云服务/接口/监控,鉴权、数据隔离、限流、备份及审计具备测试条件,,
1065,3.06.03,3 开发,App与云,手表—App—云接口联调,任务,APP,1,App,PDT负责人,15,"1063,1064,1058",2027-08-04,2027-08-24,端到端联调记录,同步、时区、单位、账号迁移与异常重试可验证,,
1066,3.07.01,3 开发,选配开发,GNSS硬件、驱动、星历与定位算法实现,任务,GNSS,1,RF,PDT负责人,20,"1055,1023",2027-07-07,2027-08-03,GNSS功能版本,定位、轨迹、授时、天线匹配及功耗进入验证,,
1067,3.07.02,3 开发,选配开发,NFC天线、固件、密钥及生态联调,任务,NFC,0,固件,PDT负责人,25,"1055,1024",,,NFC功能/生态联调记录,按选定用途完成读卡/刷卡、异常及安全路径联调,,
1068,3.07.03,3 开发,选配开发,蜂窝射频、协议、eSIM及运营商联调,任务,LTE,0,RF,PDT负责人,35,"1055,1025",,,蜂窝/eSIM Alpha,入网、重选、通话/数据及eSIM生命周期进入验证,,
1069,3.07.04,3 开发,选配开发,Wi-Fi驱动、网络配置与蓝牙共存,任务,WIFI,0,固件,PDT负责人,20,"1055,1026",,,Wi-Fi功能版本,网络异常、重连、吞吐、功耗及共存进入验证,,
1070,3.07.05,3 开发,选配开发,ECG模拟前端、电极与算法实现,任务,ECG,0,算法,PDT负责人,25,"1055,1027",,,ECG功能与信号质量记录,静电、接触、电噪声及用途边界符合设计约束,,
1071,3.07.06,3 开发,选配开发,医疗专项子计划执行与设计控制证据,任务,MED,0,法规认证,PDT负责人,60,"1028,1046",,,专项计划证据索引,按经批准的注册/临床计划逐项完成，实际周期另行细化,,60工作日仅为占位演示，绝不能作为注册、临床或获批周期承诺
1072,3.08.01,3 开发,技术评审,TR4：详细设计与设计实现准备评审,评审,BASE,1,系统架构,技术评审组,0,"1049,1050,1056,1036",2027-05-19,2027-05-19,TR4纪要/详设基线,硬件、结构、软件关键详设及DFX风险完成评审,TR4,
1073,3.09.01,3 开发,EVT,EVT整机组装与配置追溯,任务,BASE,1,NPI,PDT负责人,7,"1072,1053,1055,1051",2027-07-07,2027-07-15,EVT样机/Build报告,每台SN对应BOM、硬件、固件、工艺及异常记录,,
1074,3.09.02,3 开发,EVT,EVT功能、接口与软硬件集成摸底,任务,BASE,1,测试,PDT负责人,12,"1073,1057,1058,1061",2027-08-04,2027-08-19,EVT功能报告,核心链路可运行，阻塞问题明确复现并分级,,
1075,3.09.03,3 开发,EVT,EVT防水、跌落、声学与光学摸底,任务,BASE,1,可靠性,PDT负责人,12,"1073,1052",2027-07-16,2027-08-02,EVT物理验证报告,密封、跌落、传感和声学薄弱点识别,,
1076,3.09.04,3 开发,EVT,EVT功耗、续航、充电温升与RF摸底,任务,BASE,1,硬件,PDT负责人,12,"1073,1059,1048",2027-08-04,2027-08-19,EVT功耗/RF/热报告,与设计预算对照，瓶颈和整改方向明确,,
1077,3.09.05,3 开发,EVT,EVT选配功能集成摸底,任务,BASE,1,测试,PDT负责人,10,"1066,1067,1068,1070",2027-08-04,2027-08-17,选配EVT报告,所有启用功能具有可复现的冒烟结果,,
1078,3.09.06,3 开发,EVT,EVT问题归因、方案整改与复测,任务,BASE,1,系统架构,PDT负责人,12,"1074,1075,1076,1077",2027-08-20,2027-09-06,EVT闭环清单,架构性风险关闭或有获批的后续验证方案,,
1079,3.09.07,3 开发,EVT,EVT退出/原型验证检查,评审,BASE,1,QA,技术评审组,0,"1078,1065,1069",2027-09-07,2027-09-07,EVT退出纪要,允许转DVT的风险清单、版本及样机需求确认,EVT退出,
1080,3.10.01,3 开发,DVT准备,DVT硬件/射频改板与制板,任务,BASE,1,硬件,PDT负责人,20,1079,2027-09-07,2027-10-04,DVT PCBA/设计变更,EVT根因修改完成且版本可追溯,,
1081,3.10.02,3 开发,DVT准备,DVT修模、T2、密封和公差优化,任务,BASE,1,结构,PDT负责人,20,1079,2027-09-07,2027-10-04,DVT结构件/尺寸报告,结构问题关闭，材料与工艺接近量产状态,,
1082,3.10.03,3 开发,DVT准备,固件功能完成与系统稳定性加固,任务,BASE,1,固件,PDT负责人,20,"1079,1060",2027-09-07,2027-10-04,Feature Complete固件,规格内功能实现，异常恢复及接口兼容满足测试入口,,
1083,3.10.04,3 开发,DVT准备,App/云Beta与兼容性加固,任务,APP,1,App,PDT负责人,20,"1079,1065",2027-09-07,2027-10-04,App/云Beta版本,核心用户路径可验证，重大联调问题关闭,,
1084,3.10.05,3 开发,DVT准备,安全与隐私控制实现及自检,任务,BASE,1,安全隐私,PDT负责人,15,"1079,1032,1056",2027-09-07,2027-09-27,控制实现/扫描结果/SBOM,鉴权、加密、日志脱敏、权限与数据生命周期有实现证据,,
1085,3.11.01,3 开发,产测与工艺,产测夹具、ATE、气密及校准设备开发,任务,BASE,1,NPI,PDT负责人,30,"1072,1036",2027-05-19,2027-06-29,产测/校准治具与软件,RF、显示、传感、电流、气密和追溯有工站方案,,
1086,3.11.02,3 开发,产测与工艺,工艺流程、PFMEA与控制计划初版,任务,BASE,1,NPI,PDT负责人,15,"1073,1036",2027-07-16,2027-08-05,流程图/PFMEA/控制计划,关键工序、防错、返修及密封质量控制明确,,
1087,3.12.01,3 开发,包装与配件,充电配件、包装结构及运输方案开发,任务,BASE,1,结构,PDT负责人,20,"1046,1020,1031",2027-04-07,2027-05-04,配件/包装设计,充电防呆、标识、运输保护及配件合规范围确认,,
1088,3.10.06,3 开发,DVT准备,DVT整机试制、样机分配及配置审计,任务,BASE,1,NPI,PDT负责人,8,"1080,1081,1082,1084",2027-10-05,2027-10-14,DVT样机/版本及分配表,测试、认证、Beta样机数量和配置满足批准计划,,
1089,3.13.01,3 开发,系统集成,系统集成测试与端到端功能覆盖,任务,BASE,1,测试,PDT负责人,15,"1088,1083,1060,1077",2027-10-15,2027-11-04,SIT报告/覆盖矩阵,产品包关键路径覆盖，阻塞缺陷闭环可审计,,
1090,3.08.02,3 开发,技术评审,TR5：集成版本质量与验证入口评审,评审,BASE,1,系统架构,技术评审组,0,"1089,1079,1062,1087",2027-11-05,2027-11-05,TR5纪要/验证基线,产品包具备正式验证条件，风险、配置及DVP入口核准,TR5,
1091,4.01.01,4 验证,设计验证,DVT功能、性能、压力及长稳验证,任务,BASE,1,测试,PDT负责人,20,1090,2027-11-05,2027-12-02,功能/性能/长稳报告,覆盖SRS和边界条件，缺陷分级及复测证据完整,,
1092,4.01.02,4 验证,设计验证,可靠性：温湿度、冷热冲击、跌落与振动,任务,BASE,1,可靠性,PDT负责人,25,1090,2027-11-05,2027-12-09,可靠性报告,按批准任务剖面、样本量和失效准则执行,,
1093,4.01.03,4 验证,设计验证,防水、动态佩戴、声学膜及老化后复测,任务,BASE,1,可靠性,PDT负责人,20,1090,2027-11-05,2027-12-02,防水/声学/老化报告,按承诺使用场景和方法验收，覆盖老化及装配变差,,
1094,4.01.04,4 验证,设计验证,汗液、盐雾、磨耗、按键与表带耐久,任务,BASE,1,可靠性,PDT负责人,20,1090,2027-11-05,2027-12-02,材料/外观/耐久报告,接触材料、涂层和连接机构达到批准规格,,
1095,4.01.05,4 验证,设计验证,电池、充电安全、寿命与整机温升,任务,BASE,1,硬件,PDT负责人,25,1090,2027-11-05,2027-12-09,电池/充电/温升报告,正常、异常、保护及老化工况达到批准安全目标,,
1096,4.01.06,4 验证,设计验证,典型/重度场景续航及功耗回归,任务,BASE,1,测试,PDT负责人,15,1090,2027-11-05,2027-11-25,续航模型与实测,亮度、采样、连接、定位等条件锁定，可重复达到已批目标,,
1097,4.01.07,4 验证,设计验证,RF、EMC、ESD及人体佩戴共存验证,任务,BASE,1,RF,PDT负责人,20,1090,2027-11-05,2027-12-02,RF/EMC/ESD报告,覆盖整机、配件、佩戴及启用无线组合,,
1098,4.02.01,4 验证,运动健康验证,心率/血氧/睡眠/运动准确度与泛化验证,任务,BASE,1,算法,QA,25,"1090,1062",2027-11-05,2027-12-09,算法独立验证报告,按批准参考方法、人群分层、样本和统计判据验收,,
1099,4.02.02,4 验证,运动健康验证,GNSS静态、动态轨迹与复杂环境验证,任务,GNSS,1,测试,PDT负责人,20,"1090,1066",2027-11-05,2027-12-02,GNSS验证报告,按批准的定位、轨迹和功耗目标验收,,
1100,4.03.01,4 验证,功能选配验证,NFC用途功能、安全与合作方验收,任务,NFC,0,测试,PDT负责人,20,"1090,1067",,,NFC验证/合作方结论,按已选择生态完成真实场景、互操作和安全验证,,
1101,4.03.02,4 验证,功能选配验证,蜂窝弱场、移动性、eSIM与功耗验证,任务,LTE,0,RF,PDT负责人,25,"1090,1068",,,蜂窝/eSIM验证报告,覆盖目标运营商、频段、漫游/切网及异常恢复,,
1102,4.03.03,4 验证,功能选配验证,Wi-Fi吞吐、共存、网络异常与安全验证,任务,WIFI,0,测试,PDT负责人,15,"1090,1069",,,Wi-Fi验证报告,通过批准频段与路由器矩阵，异常场景可恢复,,
1103,4.03.04,4 验证,功能选配验证,ECG信号质量、精度与使用场景验证,任务,ECG,0,算法,PDT负责人,25,"1090,1070",,,ECG验证报告,按用途、参考方法、人群和统计判据验收；不替代医疗注册,,
1104,4.04.01,4 验证,App与云验证,手机兼容、权限、升级与国际化验证,任务,APP,1,测试,PDT负责人,20,"1090,1083",2027-11-05,2027-12-02,手机OS/机型兼容报告,确认支持范围，覆盖后台、断连、升级、时区和语言,,
1105,4.04.02,4 验证,App与云验证,云性能、容灾、数据一致性与监控演练,任务,CLOUD,1,云端,PDT负责人,20,"1090,1064",2027-11-05,2027-12-02,压测/恢复/数据一致性报告,容量、恢复目标、告警和跨区数据策略达到已批要求,,
1106,4.05.01,4 验证,安全与隐私验证,渗透、模糊测试、依赖漏洞及隐私验证,任务,BASE,1,安全隐私,PDT负责人,20,"1090,1084",2027-11-05,2027-12-02,安全测试/SBOM/整改报告,高风险漏洞与隐私缺口已闭环，残余风险获授权,,
1107,4.05.02,4 验证,安全与隐私验证,OTA断电、回滚、跨版本及批次兼容验证,任务,BASE,1,测试,PDT负责人,15,1090,2027-11-05,2027-11-25,OTA兼容/恢复报告,覆盖升级异常、签名拒绝、恢复及数据迁移,,
1108,4.06.01,4 验证,用户验证,Beta试戴、用户体验及真实场景验证,任务,BASE,1,产品经理,QA,25,"1090,1091",2027-12-03,2028-01-06,Beta报告/体验问题清单,招募授权、问题闭环、体验和健康宣称证据可追溯,,
1109,4.07.01,4 验证,法规认证,认证样机、软件、BOM与标签配置冻结,任务,BASE,1,法规认证,PDT负责人,3,"1090,1097",2027-12-03,2027-12-07,认证样机配置清单,报告配置与拟量产配置一致；变更有再评估机制,,
1110,4.07.02,4 验证,法规认证,Bluetooth SIG资格、型号与品牌合规完成,任务,BASE,1,法规认证,PDT负责人,15,1109,2027-12-08,2027-12-28,Qualified Product记录,以适当主体完成流程，上市型号与记录一致,,供应商设计资格不自动替代自有品牌产品资格；流程以SIG当前要求为准
1111,4.07.03,4 验证,法规认证,锂电运输UN38.3报告、摘要及包装资料核验,任务,BASE,1,法规认证,PDT负责人,15,"1109,1095",2027-12-10,2027-12-30,适用报告/试验摘要/运输资料,型号、电芯/电池包、制造商和运输配置匹配,,
1112,4.08.01,4 验证,中国市场,中国无线电型号核准适用性与办理,任务,CN,1,法规认证,PDT负责人,25,1109,2027-12-08,2028-01-11,型号核准或书面不适用依据,根据频段、功率与目录确认，不将蓝牙一概认作豁免,,
1113,4.08.02,4 验证,中国市场,中国整机/电池/适配器CCC范围判定及取证,任务,CN,1,法规认证,PDT负责人,25,1109,2027-12-08,2028-01-11,CCC适用结论/有效证书,按目录和产品界定确认，核对电池与随附电源配置,,
1114,4.08.03,4 验证,中国市场,中国隐私、App与数据合规验收,任务,CN,1,安全隐私,PDT负责人,20,"1106,1104",2027-12-03,2027-12-30,适用清单/整改与验收,权限、健康/位置数据、账号注销及跨境场景经责任人确认,,
1115,4.08.04,4 验证,中国市场,蜂窝产品中国进网/运营商要求核验与办理,任务,LTE_CN,0,法规认证,PDT负责人,35,"1109,1101",,,适用准入证据,依现行目录及目标运营商确认，取得适用准入文件,,
1116,4.09.01,4 验证,欧盟市场,欧盟RED、RF暴露、EMC与安全符合性,任务,EU,0,法规认证,PDT负责人,30,1109,,,测试/技术文件/DoC资料,频段、使用配置及符合性评定路径由负责人确认,,
1117,4.09.02,4 验证,欧盟市场,欧盟网络安全、CRA时间适用性与数据要求,任务,EU,0,安全隐私,PDT负责人,25,"1109,1106",,,RED/CRA/数据要求适用结论,按实际投放日期复核适用义务、报告与支持期；登记法源版本,,RED网络安全相关要求自2025-08-01适用；2026/339规定相关授权法规自2027-12-11起废止，按投放日期复核CRA衔接
1118,4.09.03,4 验证,欧盟市场,欧盟材料、电池、废弃物与包装义务核验,任务,EU,0,法规认证,PDT负责人,25,1109,,,材料/电池/注册等合规档案,适用RoHS/REACH、电池、WEEE及包装义务逐项确认,,
1119,4.10.01,4 验证,美国市场,美国FCC授权、RF暴露与标签要求完成,任务,US,0,法规认证,PDT负责人,30,1109,,,适用授权/测试/标签文件,整机配置、模块集成条件及实验室资格有效且一致,,
1120,4.10.02,4 验证,美国市场,美国目标州隐私及健康宣称适用性核验,任务,US,0,安全隐私,PDT负责人,20,"1106,1104",,,市场适用结论/验收,依据目标用户、州及用途确认数据和宣称边界,,
1121,4.11.01,4 验证,蜂窝准入,目标运营商/GCF/PTCRB等适用准入完成,任务,LTE,0,法规认证,PDT负责人,40,"1109,1101",,,适用准入/合作方验收记录,按市场及运营商确定项目，全部适用准入已完成,,
1122,4.12.01,4 验证,医疗专项,医疗注册/许可及临床证据放行核验,任务,MED,0,法规认证,PDT负责人,60,"1071,1103",,,适用许可/证据/标签批准,取得实际适用许可和证据方可放行；无许可不能用排期替代,,60工作日只为演示占位，必须替换成经批准的专项计划及获批条件
1123,4.13.01,4 验证,认证汇总,基础与中国市场认证资料汇总,任务,BASE,1,法规认证,PDT负责人,3,"1110,1111,1112,1113",2028-01-12,2028-01-14,基础/中国认证证据包,所有启用项目有完成或经批准不适用的证据,,
1124,4.13.02,4 验证,认证汇总,欧盟、美国及蜂窝认证资料汇总,任务,BASE,1,法规认证,PDT负责人,3,"1116,1117,1119,1121",2027-12-08,2027-12-10,海外/蜂窝认证证据包,全部启用市场与无线配置准入证据完整,,
1125,4.13.03,4 验证,认证汇总,法规资料完整性及医疗路径核验,任务,BASE,1,法规认证,PDT负责人,3,"1123,1124,1122,1115",2028-01-17,2028-01-19,认证放行清单,检查认证矩阵全部项目；缺失项不得以排期完成替代,,
1126,4.13.04,4 验证,认证汇总,材料、数据、隐私与市场文件最终核验,任务,BASE,1,法规认证,PDT负责人,2,"1118,1114,1120,1125",2028-01-20,2028-01-21,完整市场合规包,适用性矩阵所有启用行都具备放行结论,,
1127,4.14.01,4 验证,缺陷与回归,DVT主要功能/可靠性问题整改与复测,任务,BASE,1,系统架构,PDT负责人,15,"1092,1093,1095,1098",2027-12-10,2027-12-30,DVT问题关闭证据,根因、纠正措施及影响范围回归齐全,,
1128,4.14.02,4 验证,缺陷与回归,选配功能与端云问题整改与复测,任务,BASE,1,系统架构,PDT负责人,12,"1099,1100,1101,1103",2027-12-03,2027-12-20,选配问题关闭证据,启用功能的高风险问题关闭,,
1129,4.14.03,4 验证,缺陷与回归,材料、续航、无线及升级问题闭环,任务,BASE,1,系统架构,PDT负责人,10,"1094,1096,1097,1107",2027-12-03,2027-12-16,跨域问题关闭证据,设计和生产影响评估完成，回归通过,,
1130,4.14.04,4 验证,缺陷与回归,App/云/Wi-Fi及安全问题闭环,任务,BASE,1,系统架构,PDT负责人,10,"1104,1105,1102,1106",2027-12-03,2027-12-16,端云与安全回归证据,适用版本缺陷闭环且接口和数据兼容,,
1131,4.01.08,4 验证,设计验证,DVT退出与设计冻结,评审,BASE,1,QA,技术评审组,0,"1127,1128,1129,1130",2027-12-31,2027-12-31,DVT退出/冻结基线,需求验证覆盖、设计风险和残余问题可接受，允许PVT,DVT退出,
1132,4.15.01,4 验证,生产验证,PVT物料齐套、线体与人员准备,任务,BASE,1,NPI,PDT负责人,12,"1131,1085,1086",2027-12-31,2028-01-17,PVT准备清单/齐套表,量产候选物料、设备、工艺、人员和追溯就绪,,
1133,4.15.02,4 验证,生产验证,PVT小批试产及制造过程确认,任务,BASE,1,NPI,PDT负责人,10,1132,2028-01-18,2028-01-31,PVT Build报告,记录工位、产能、良率、返修和异常，样本按计划,,
1134,4.15.03,4 验证,生产验证,量测系统、产测覆盖与校准相关性验证,任务,BASE,1,NPI,QA,8,1133,2028-02-01,2028-02-10,MSA/GR&R或适用量测评价,产线与实验室相关性、误判漏判和校准溯源满足已批标准,,
1135,4.15.04,4 验证,生产验证,良率、节拍、产能及关键过程能力验收,任务,BASE,1,NPI,QA,10,1133,2028-02-01,2028-02-14,良率/产能/过程能力报告,达到项目批准目标；示例目标须由制造与质量签批,,
1136,4.15.05,4 验证,生产验证,PVT批次抽检、ORT与包装运输验证,任务,BASE,1,可靠性,PDT负责人,15,"1133,1087",2028-02-01,2028-02-21,PVT/ORT/运输报告,生产工艺对可靠性无不利影响，运输后功能外观合格,,
1137,4.15.06,4 验证,生产验证,量产供应能力、备料与替代料放行,任务,BASE,1,采购,PDT负责人,10,"1131,1038",2027-12-31,2028-01-13,供应保障/物料放行清单,交期、产能、单一来源、PCN和替代料验证闭环,,
1138,4.16.01,4 验证,服务与上市,维修流程、备件、诊断工具和客服培训,任务,BASE,1,服务,PDT负责人,20,1131,2027-12-31,2028-01-27,服务方案/备件/培训,保修、退换、数据保护及返修防水复验可执行,,
1139,4.16.02,4 验证,服务与上市,说明书、标签、健康宣称及营销资料定稿,任务,BASE,1,产品经理,PDT负责人,15,"1131,1005",2027-12-31,2028-01-20,用户资料/标签/宣称证据,与认证型号、实际功能、用途限制和市场语言一致,,
1140,4.16.03,4 验证,服务与上市,渠道、定价、首销及上市供货计划,任务,BASE,1,市场,PDT负责人,15,"1131,1039",2027-12-31,2028-01-20,上市计划/需求预测,需求、渠道库存、SKU、区域和售后准备一致,,
1141,4.16.04,4 验证,服务与上市,App商店审核及正式分发准备,任务,APP,1,App,PDT负责人,15,"1104,1139",2028-01-21,2028-02-10,商店审核/分发就绪证据,目标区域、账号、权限、政策和配套版本可供用户获取,,
1142,4.17.01,4 验证,版本与放行,量产候选版本回归与配置审计,任务,BASE,1,测试,QA,10,"1131,1108,1126",2028-01-24,2028-02-04,RC回归/配置审计,BOM、固件、算法、App、云与认证/产测配置一致,,
1143,4.15.07,4 验证,生产验证,PVT退出与生产准备验收,评审,BASE,1,NPI,QA,0,"1134,1135,1136,1137",2028-02-22,2028-02-22,PVT退出/生产准备结论,量产工艺与测试可重复，良率产能及残余风险获批,PVT退出,
1144,4.18.01,4 验证,技术评审,TR6：产品包与制造验证总评审,评审,BASE,1,QA,技术评审组,0,"1143,1142,1138,1126",2028-02-22,2028-02-22,TR6报告/技术放行建议,验证、用户试用、认证、制造及服务证据完整,TR6,
1145,4.19.01,4 验证,投资决策,ADCP：可获得性与商业发布决策,评审,BASE,1,PM,IPMT,0,"1144,1140,1139,1141",2028-02-22,2028-02-22,ADCP决议/发布授权,商业、供应、质量、法规及服务准备获授权确认,ADCP,
1146,5.01.01,5 发布,量产准备,量产BOM、图纸、SOP与软硬件版本发布,任务,BASE,1,NPI,PDT负责人,3,1145,2028-02-22,2028-02-24,受控量产资料包,PLM/MES/ERP版本、替代料与烧录文件一致,,
1147,5.01.02,5 发布,量产准备,首批生产订单、物料与排产落实,任务,BASE,1,采购,PDT负责人,5,"1145,1137",2028-02-22,2028-02-28,首批订单/排产/齐套,首销区域、SKU、产能、运输和库存风险已确认,,
1148,5.02.01,5 发布,量产爬坡,MP首批量产与过程质量巡检,任务,BASE,1,NPI,PDT负责人,10,"1146,1147",2028-02-29,2028-03-13,首批量产报告,关键工序、追溯、良率和异常处理稳定,,
1149,5.02.02,5 发布,量产爬坡,首批OQC、抽检与质量放行,任务,BASE,1,QA,PDT负责人,3,1148,2028-03-14,2028-03-16,OQC/批次放行记录,符合已批抽样计划，重大缺陷及不合格品已处置,,
1150,5.03.01,5 发布,上市交付,运输文件、仓储、区域合规与交付准备,任务,BASE,1,采购,PDT负责人,5,"1149,1111",2028-03-17,2028-03-23,出货/运输/仓储资料,电池运输、标签、目的市场和库存追溯满足适用要求,,
1151,5.03.02,5 发布,上市交付,云生产容量、安全运维与值守就绪,任务,CLOUD,1,云端,PDT负责人,5,"1145,1105",2028-02-22,2028-02-28,生产变更/监控/值守记录,备份恢复、告警、回滚及隐私事件响应已演练,,
1152,5.03.03,5 发布,上市交付,渠道物料、培训与售后入口核验,任务,BASE,1,市场,PDT负责人,5,"1145,1139,1138",2028-02-22,2028-02-28,渠道/客服准备记录,商品信息、支持机型、功能限制及用户入口一致,,
1153,5.03.04,5 发布,上市交付,GA发布前产品包与证据复核,任务,BASE,1,PM,PDT负责人,2,"1150,1151,1152,1141",2028-03-24,2028-03-27,GA检查清单,所有销售市场准入有效，版本可获取，质量放行证据可追溯,,
1154,5.04.01,5 发布,商业发布,GA：商业可获得/正式上市,里程碑,BASE,1,产品经理,IPMT,0,1153,2028-03-28,2028-03-28,GA公告/正式SKU与版本,经授权对客户正式交付并具备供货、服务和版本支持,GA,
1155,5.05.01,5 发布,量产交接,PDT到生命周期团队移交与项目复盘,任务,BASE,1,PM,PDT负责人,5,1154,2028-03-28,2028-04-03,交接/项目复盘/未决项责任,LMT、服务、质量及供应链接受指标、资料和遗留事项,,
1156,6.01.01,6 生命周期,在市监控,首销质量、激活、退货与投诉监测窗口,任务,BASE,1,QA,PDT负责人,30,1154,2028-03-28,2028-05-08,首销质量看板/周报,按批准阈值监测批次、区域及版本异常,,30工作日为首轮观察窗口；监测应持续到支持期结束
1157,6.01.02,6 生命周期,在市监控,现场问题FRACAS、8D与纠正预防,任务,BASE,1,QA,PDT负责人,15,1156,2028-05-09,2028-05-29,FRACAS/8D/闭环验证,影响范围、根因、措施及有效性可追溯,,
1158,6.02.01,6 生命周期,版本与支持,维护版本、漏洞与OTA灰度发布窗口,任务,BASE,1,固件,PDT负责人,30,1154,2028-03-28,2028-05-08,维护/漏洞响应与灰度记录,评估回归、兼容、用户告知与回滚效果,,30工作日为首轮维护窗口；不代表软件支持期
1159,6.03.01,6 生命周期,成本与供应,成本优化、PCN和第二来源验证,任务,BASE,1,采购,PDT负责人,25,1155,2028-04-04,2028-05-08,降本/PCN/替代料评审,变化经ECR/ECO并评估认证、算法、质量和可靠性影响,,
1160,6.04.01,6 生命周期,经营评审,上市后经营、质量和用户价值复盘,任务,BASE,1,产品经理,IPMT,5,"1157,1158,1159",2028-05-30,2028-06-05,上市后评审/迭代建议,销量、毛利、退货、用户反馈和质量与商业计划比较,,
1161,6.05.01,6 生命周期,退出与退市,EOL/EOS计划、最后采购与客户通知,任务,RETIRE,0,产品经理,IPMT,20,1160,,,EOL/EOS及库存/备件计划,业务触发后确定停产、支持期、合同及用户告知,,默认关闭；应按实际生命周期和支持承诺设置最早开始约束
1162,6.05.02,6 生命周期,退出与退市,退市数据保留/删除、云服务与安全支持处置,任务,RETIRE,0,安全隐私,PDT负责人,15,1161,,,退出数据与安全支持方案,符合承诺和适用要求，迁移、删除和漏洞责任明确,,
1163,6.05.03,6 生命周期,退出与退市,生命周期退出决策与归档,评审,RETIRE,0,产品经理,IPMT,0,1162,,,退出决议/最终归档,存量用户、服务、数据、库存和法律义务妥善处理,EOL DCP,
1164,7.01.01,7 跨阶段管理,项目与变更,概念阶段例会、风险、成本与配置管理,任务,BASE,1,PM,PDT负责人,20,1002,2026-11-18,2026-12-15,周报/风险与决策记录,风险、假设、问题与行动项有责任人与关闭证据,,示例管理窗口，不作为阶段退出前置；按实际周期续建
1165,7.01.02,7 跨阶段管理,项目与变更,计划阶段例会、需求与基线变更管理,任务,BASE,1,PM,PDT负责人,30,1016,2027-01-19,2027-03-01,计划变更/决策/基线记录,变更影响范围、成本、资源、进度和评审均有记录,,
1166,7.01.03,7 跨阶段管理,项目与变更,开发阶段跨域例会、缺陷与配置管理,任务,BASE,1,PM,PDT负责人,90,1045,2027-04-05,2027-08-06,周报/缺陷/Build与ECO记录,设计、采购、制造、软件及认证变更相互同步,,
1167,7.01.04,7 跨阶段管理,项目与变更,验证阶段风险、缺陷与认证变更管理,任务,BASE,1,PM,PDT负责人,70,1090,2027-11-05,2028-02-10,验证问题/配置与决议,测试版本、修复范围及重测和重新认证影响可追溯,,
1168,7.01.05,7 跨阶段管理,项目与变更,发布阶段日例会与上市异常响应,任务,BASE,1,PM,PDT负责人,20,1145,2028-02-22,2028-03-20,爬坡与发布行动项,质量、供应、服务和销售异常及时升级及闭环,,
